# Sensor Platform-Project Schedule

Schedule from MS Project, 2014-11-09 to 2015-06-04, 24 hours a day, A marks actual dates.

## Calendars

- 24 Hours: Mon-Sun 00:00-24:00.

## Resources

| Resource |
| --- |
| Colten |
| Steve |
| Golriz |

## Schedule

| ID | WBS | Task | Type | Duration | Start | Finish | Predecessors | Complete | Remaining | Total slack | Free slack | Constraint | Resources | Work | Actual work | Text30 |
| --- | --- | --- | --- | --- | --- | --- | --- | --- | --- | --- | --- | --- | --- | --- | --- | --- |
| 1 | 1 | **Plan** |  | 106.38d? | 2014-11-10 08:00 A | 2015-02-24 17:00 |  | 91% | 9.39d? | 100d |  |  |  | 2129.27h | 2004.21h |  |
| 2 | 1.1 | Teaming up and Meeting with Advisor | manual | 3.33d | 2014-11-10 08:00 A | 2014-11-20 17:00 A |  | 100% |  |  |  |  | Colten; Steve; Golriz | 240h | 240h | 1.1 |
| 3 | 1.2 | Understanding the project and its requirements |  | 15.56d | 2014-11-10 08:00 A | 2015-01-07 10:40 |  | 98% | 0.27d | 148.26d |  | finish no earlier than 2014-11-30 17:00 | Colten; Steve; Golriz | 906.67h | 899.25h | 1.2 |
| 4 | 1.3 | Meeting with sponsors |  | 0.33d | 2014-12-04 08:00 A | 2014-12-04 17:00 A |  | 100% |  |  |  | start no earlier than 2014-12-04 08:00 | Colten; Golriz; Steve | 24h | 24h |  |
| 5 | 1.4 | Reviewing the existing design and gathering info about the requirements |  | 8.67d | 2014-12-05 08:00 A | 2015-01-08 17:00 |  | 99% | 0.09d | 147d |  | finish no earlier than 2015-01-07 17:00 | Colten; Golriz; Steve | 624h | 617.76h |  |
| 6 | 1.5 | Meeting with sponsors |  | 0.33d? | 2015-01-08 08:00 A | 2015-01-08 17:00 A |  | 100% |  |  |  | start no earlier than 2015-01-08 08:00 | Colten; Golriz; Steve | 24h | 24h |  |
| 7 | 1.6 | Concept Generation and Evaluation |  | 0.33d? | 2015-01-09 08:00 A | 2015-01-09 17:00 A |  | 100% |  |  |  | finish no earlier than 2015-01-11 17:00 | Colten; Steve | 16h | 16h |  |
| 8 | 1.7 | Write up the preliminary project proposal |  | 0.67d | 2015-01-11 08:00 A | 2015-01-13 17:00 A |  | 100% |  |  |  | finish no earlier than 2015-01-13 17:00 | Golriz | 16h | 16h |  |
| 9 | 1.8 | Review project proposal |  | 1d | 2015-01-14 08:00 A | 2015-01-16 17:00 A | 8 | 100% |  |  |  | finish no earlier than 2015-01-18 17:00 | Colten; Steve | 29.6h | 29.6h |  |
| 10 | 1.9 | Present Project Proposal |  | 1h | 2015-02-24 08:00 A | 2015-02-24 09:00 |  |  | 1h | 100.33d |  | finish no earlier than 2015-02-24 17:00 |  | 1h |  |  |
| 11 | 1.10 | **Develop project requirement** |  | 47.38d | 2015-01-08 08:00 A | 2015-02-24 17:00 |  | 57% | 20.37d | 100d |  |  |  | 248h | 137.6h |  |
| 12 | 1.10.1 | Develop the general project requirement |  | 3.67d | 2015-01-08 08:00 A | 2015-01-20 17:00 | 9 | 82% | 0.67d | 3d |  | finish no earlier than 2015-01-20 17:00 | Colten; Steve; Golriz | 160h | 112h |  |
| 13 | 1.10.2 | Write up the detail project requirement |  | 2d | 2015-01-25 08:00 A | 2015-01-28 17:00 | 12 | 33% | 1.33d | 4.76d | 4.62d |  | Golriz; Colten | 48h | 16h |  |
| 14 | 1.10.3 | Review project requirement document |  | 1d | 2015-02-02 08:00 A | 2015-02-03 17:00 | 13 | 13% | 0.87d | 121d |  |  | Colten; Steve; Golriz | 40h | 9.6h |  |
| 15 | 1.10.4 | Gain Sponsor approval of requirements | milestone | 0d | 2015-02-24 17:00 | 2015-02-24 17:00 |  |  |  | 100d |  | finish no earlier than 2015-02-24 17:00 |  |  |  |  |
| 16 | 2 | **Design** |  | 75.33d? | 2015-01-09 08:00 A | 2015-03-25 16:00 |  | 49% | 38.18d? | 71.04d |  |  |  | 984h | 602.4h |  |
| 17 | 2.1 | Determine the necessary functional blocks |  | 4.33d | 2015-01-09 08:00 A | 2015-01-23 17:00 A |  | 100% |  |  |  | finish no earlier than 2015-01-25 17:00 | Colten; Steve | 208h | 208h |  |
| 18 | 2.2 | Review the block layout |  | 0.33d | 2015-01-25 08:00 A | 2015-01-26 17:00 A | 17 | 100% |  |  |  |  | Golriz | 8h | 8h |  |
| 19 | 2.3 | Determine the design concept of each block: problem to solve and available technology |  | 1.71d | 2015-02-01 08:00 A | 2015-02-06 17:00 |  | 88% | 0.21d | 118d |  | finish no earlier than 2015-02-06 17:00 | Colten; Steve | 80h | 72h |  |
| 20 | 2.4 | Write the test plan |  | 2d | 2015-02-04 17:00 A | 2015-02-06 17:00 A |  | 100% |  |  |  | finish no earlier than 2015-02-06 17:00 | Colten | 48h | 48h |  |
| 21 | 2.5 | Review the test plan |  | 0.33d | 2015-02-06 08:00 | 2015-02-07 17:00 |  |  |  | 0d |  | finish no earlier than 2015-02-07 17:00 | Steve; Golriz | 8h |  |  |
| 22 | 2.6 | Design the preliminary circuitry |  | 2.67d | 2015-02-02 08:00 | 2015-02-11 17:00 |  |  |  | 20d | 0.62d | finish no earlier than 2015-02-11 17:00 | Golriz | 64h |  |  |
| 23 | 2.7 | Review the circuit design |  | 1d | 2015-02-12 08:00 | 2015-02-14 17:00 | 22 |  |  | 19.62d | 1.62d | finish no earlier than 2015-02-14 17:00 | Colten; Steve | 32h |  |  |
| 24 | 2.8 | Generate the circuitry schematic and PCB layout on Eagle CAD |  | 1.67d | 2015-02-16 08:00 | 2015-02-20 17:00 | 23 |  |  | 18d | 0d | finish no earlier than 2015-02-20 17:00 | Golriz | 40h |  |  |
| 25 | 2.9 | Review and revise preliminary design |  | 0.33d | 2015-02-20 17:00 | 2015-02-21 01:00 | 24 |  |  | 20.52d | 18.29d |  | Steve; Colten | 8h |  |  |
| 26 | 2.10 | Finalize the preliminary schematic and PCB design |  | 2d | 2015-03-11 08:00 | 2015-03-18 17:00 | 25 |  |  | 2.23d |  | start no earlier than 2015-03-11 08:00 | Steve | 48h |  |  |
| 27 | 2.11 | Review the design with the sponsors |  | 0.67d? | 2015-03-21 08:00 A | 2015-03-23 17:00 | 26 | 78% | 0.15d? | 73d |  |  | Colten; Golriz; Steve | 24h | 16.8h |  |
| 28 | 2.12 | Specify the component for the design |  | 7d? | 2015-02-06 08:00 A | 2015-02-27 17:00 |  | 46% | 3.8d? | 97d |  | finish no earlier than 2015-02-27 17:00 | Colten; Golriz; Steve | 384h | 230.4h |  |
| 29 | 2.13 | Place order for the components |  | 1d? | 2015-03-23 08:00 A | 2015-03-25 16:00 |  | 47% | 0.53d? | 71.04d |  | finish no earlier than 2015-03-02 17:00 | Colten; Steve | 32h | 19.2h |  |

| ID | WBS | Task | Type | Duration | Start | Finish | Total slack | Constraint | Resources | Work |
| --- | --- | --- | --- | --- | --- | --- | --- | --- | --- | --- |
| 30 | 3 | **Build** |  | 101.38d? | 2015-01-15 08:00 | 2015-04-26 17:00 | 39d |  |  | 1361h |
| 31 | 3.1 | **User Interface** |  | 28.38d? | 2015-03-19 08:00 | 2015-04-16 17:00 | 9d |  | Colten | 681h |
| 32 | 3.1.1 | Finalize configuration parameters | milestone | 6.38d? | 2015-03-19 08:00 | 2015-03-25 17:00 | 71d | start no earlier than 2015-03-19 08:00 |  |  |
| 33 | 3.1.2 | Load sensor type definitions from file |  | 4.38d? | 2015-03-25 08:00 | 2015-03-29 17:00 | 67d | finish no earlier than 2015-03-29 17:00 |  |  |
| 34 | 3.1.3 | **CSV** |  | 7.38d? | 2015-03-30 08:00 | 2015-04-06 17:00 | 59d |  |  |  |
| 35 | 3.1.3.1 | write sensor -> CSV encoding |  | 5.38d? | 2015-03-30 08:00 | 2015-04-04 17:00 | 61d | finish no earlier than 2015-04-04 17:00 |  |  |
| 36 | 3.1.3.2 | write CSV -> sensor decoding |  | 3.38d? | 2015-04-03 08:00 | 2015-04-06 17:00 | 59d | start no earlier than 2015-04-03 08:00 |  |  |
| 37 | 3.1.4 | **Add filesystem functions** |  | 19.38d | 2015-03-28 08:00 | 2015-04-16 17:00 |  |  |  |  |
| 38 | 3.1.4.1 | Save configurator |  | 3.38d? | 2015-04-07 08:00 | 2015-04-10 17:00 | 55d | finish no earlier than 2015-04-10 17:00 |  |  |
| 39 | 3.1.4.2 | Load configurator |  | 3.38d? | 2015-04-07 08:00 | 2015-04-10 17:00 | 55d | finish no earlier than 2015-04-10 17:00 |  |  |
| 40 | 3.1.5 | Add serial functionality |  | 5.38d? | 2015-04-11 08:00 | 2015-04-16 17:00 | 49d | start no earlier than 2015-04-11 08:00 |  |  |
| 41 | 3.2 | **Hack the serial IAP driver** |  | 10.38d? | 2015-04-16 08:00 | 2015-04-26 17:00 | 39d |  |  |  |
| 42 | 3.2.1 | Add a menu option for downloading a configuration |  | 2.38d? | 2015-04-16 08:00 | 2015-04-18 17:00 | 47d | finish no earlier than 2015-04-18 17:00 |  |  |
| 43 | 3.2.2 | Implement functionality of downloading the configurator |  | 2.38d? | 2015-04-18 08:00 | 2015-04-20 17:00 | 45d | finish no earlier than 2015-04-20 17:00 |  |  |
| 44 | 3.2.3 | Parse the configurator into an array of sensor structs |  | 2.38d? | 2015-04-21 08:00 | 2015-04-23 17:00 | 42d | finish no earlier than 2015-04-23 17:00 |  |  |
| 45 | 3.2.4 | Save to flash |  | 2.38d? | 2015-04-24 08:00 | 2015-04-26 17:00 | 39d | start no earlier than 2015-04-24 08:00 |  |  |
| 46 | 3.3 | Program the MCU |  | 20.33d? | 2015-01-15 08:00 | 2015-04-07 17:00 | 57d | finish no earlier than 2015-04-07 17:00 | Steve | 488h |
| 47 | 3.4 | Send the boards to fab |  | 4d? | 2015-03-23 08:00 | 2015-04-07 17:00 | 58d | finish no earlier than 2015-04-07 17:00 | Golriz; Steve | 192h |
| 48 | 4 | Working on the poster |  | 60.38d? | 2015-04-01 08:00 | 2015-05-31 17:00 | 4d | finish no earlier than 2015-05-31 17:00 |  |  |
| 49 | 5 | **Test** |  | 38.38d? | 2015-04-08 08:00 | 2015-05-16 17:00 | 19d |  |  | 1450.42h |
| 50 | 5.1 | Debug the codes |  | 5d? | 2015-04-08 08:00 | 2015-04-22 17:00 | 43d | finish no earlier than 2015-04-22 17:00 | Colten; Steve | 136h |
| 51 | 5.2 | Build the system on the PCB |  | 1.67d | 2015-04-10 08:00 | 2015-04-16 17:00 | 49d | finish no earlier than 2015-04-16 17:00 | Golriz; Steve | 80h |
| 52 | 5.3 | Test the hardware |  | 4.56d | 2015-04-10 08:00 | 2015-04-24 17:00 | 41d | start no earlier than 2015-04-10 08:00 | Colten; Golriz; Steve | 205.33h |
| 53 | 5.4 | Test the Software |  | 4.33d? | 2015-04-10 08:00 | 2015-04-24 17:00 | 41d | finish no earlier than 2015-04-24 17:00 | Colten; Golriz; Steve | 200h |
| 54 | 5.5 | Test the GUI |  | 1.67d? | 2015-04-27 08:00 | 2015-04-29 17:00 | 36d | finish no earlier than 2015-04-29 17:00 | Colten; Golriz; Steve | 72h |
| 55 | 5.6 | Integration test |  | 1.67d? | 2015-04-30 08:00 | 2015-05-04 17:00 | 31d | finish no earlier than 2015-05-04 17:00 | Colten; Golriz; Steve | 72h |
| 56 | 5.7 | Functionality test |  | 1.67d? | 2015-05-05 08:00 | 2015-05-07 17:00 | 28d | finish no earlier than 2015-05-07 17:00 | Colten; Golriz; Steve | 72h |
| 57 | 5.8 | Design and build the device closure (box) | milestone | 6.33d | 2015-04-17 08:00 | 2015-05-10 17:00 | 25d | finish no earlier than 2015-05-10 17:00 | Colten; Steve | 160h |
| 58 | 5.9 | Perform the final test |  | 17.96d | 2015-04-28 09:00 | 2015-05-16 17:00 | 8d | finish no earlier than 2015-05-16 17:00 | Colten; Steve; Golriz | 453.09h |
| 59 | 6 | Write the operation manual |  | 5.46d | 2014-11-09 16:00 | 2014-11-15 03:00 | 201.58d |  | Colten | 131h |
| 60 | 7 | Review the operation manual |  | 3.17d | 2015-05-13 13:00 | 2015-05-26 17:00 | 9d | finish no earlier than 2015-05-26 17:00 | Steve; Golriz | 152h |

| ID | WBS | Task | Duration | Start | Finish | Predecessors | Complete | Remaining | Total slack | Constraint | Resources | Work |
| --- | --- | --- | --- | --- | --- | --- | --- | --- | --- | --- | --- | --- |
| 61 | 8 | **Present** | 26.38d | 2015-05-09 08:00 | 2015-06-04 17:00 |  |  |  |  |  |  | 186.22h |
| 62 | 8.1 | Complete the presentation documents (slides) | 5.67d | 2015-05-09 08:00 | 2015-05-29 17:00 |  |  |  | 0d | finish no earlier than 2015-05-29 17:00 | Golriz; Colten | 144h |
| 63 | 8.2 | Review the presentation documents | 0.33d | 2015-05-29 17:00 | 2015-06-01 17:00 | 62 |  |  | 0d | finish no earlier than 2015-05-13 17:00 | Colten; Steve; Golriz | 8h |
| 64 | 8.3 | Final presentation of the system | 1.33d | 2015-06-01 17:00 | 2015-06-04 17:00 | 63 |  |  | 0d | finish no earlier than 2015-06-04 17:00 | Colten; Steve; Golriz | 34.22h |
| 65 | 9 | **WPR** | 203.01d | 2014-11-13 16:00 A | 2015-06-04 16:15 |  | 37% | 128.57d | 0.03d |  |  |  |
| 66 | 9.1 | WPR 1 | 15min | 2014-11-13 16:00 A | 2014-11-13 16:15 A |  | 100% |  |  | start no earlier than 2014-11-13 16:00 |  |  |
| 67 | 9.2 | WPR 2 | 15min | 2014-11-20 16:00 A | 2014-11-20 16:15 A |  | 100% |  |  | start no earlier than 2014-11-20 16:00 |  |  |
| 68 | 9.3 | WPR 3 | 15min | 2014-11-27 16:00 A | 2014-11-27 16:15 A |  | 100% |  |  | start no earlier than 2014-11-27 16:00 |  |  |
| 69 | 9.4 | WPR 4 | 15min | 2014-12-04 16:00 A | 2014-12-04 16:15 A |  | 100% |  |  | start no earlier than 2014-12-04 16:00 |  |  |
| 70 | 9.5 | WPR 5 | 15min | 2014-12-11 16:00 A | 2014-12-11 16:15 A |  | 100% |  |  | start no earlier than 2014-12-11 16:00 |  |  |
| 71 | 9.6 | WPR 6 | 15min | 2014-12-18 16:00 A | 2014-12-18 16:15 A |  | 100% |  |  | start no earlier than 2014-12-18 16:00 |  |  |
| 72 | 9.7 | WPR 7 | 15min | 2014-12-25 16:00 A | 2014-12-25 16:15 A |  | 100% |  |  | start no earlier than 2014-12-25 16:00 |  |  |
| 73 | 9.8 | WPR 8 | 15min | 2015-01-01 16:00 A | 2015-01-01 16:15 A |  | 100% |  |  | start no earlier than 2015-01-01 16:00 |  |  |
| 74 | 9.9 | WPR 9 | 15min | 2015-01-08 16:00 A | 2015-01-08 16:15 A |  | 100% |  |  | start no earlier than 2015-01-08 16:00 |  |  |
| 75 | 9.10 | WPR 10 | 15min | 2015-01-15 16:00 A | 2015-01-15 16:15 A |  | 100% |  |  | start no earlier than 2015-01-15 16:00 |  |  |
| 76 | 9.11 | WPR 11 | 15min | 2015-01-22 16:00 A | 2015-01-22 16:15 A |  | 100% |  |  | start no earlier than 2015-01-22 16:00 |  |  |
| 77 | 9.12 | WPR 12 | 15min | 2015-01-29 16:00 | 2015-01-29 16:15 |  |  |  | 126.03d | start no earlier than 2015-01-29 16:00 |  |  |
| 78 | 9.13 | WPR 13 | 15min | 2015-02-05 16:00 | 2015-02-05 16:15 |  |  |  | 119.03d | start no earlier than 2015-02-05 16:00 |  |  |
| 79 | 9.14 | WPR 14 | 15min | 2015-02-12 16:00 | 2015-02-12 16:15 |  |  |  | 112.03d | start no earlier than 2015-02-12 16:00 |  |  |
| 80 | 9.15 | WPR 15 | 15min | 2015-02-19 16:00 | 2015-02-19 16:15 |  |  |  | 105.03d | start no earlier than 2015-02-19 16:00 |  |  |
| 81 | 9.16 | WPR 16 | 15min | 2015-02-26 16:00 | 2015-02-26 16:15 |  |  |  | 98.03d | start no earlier than 2015-02-26 16:00 |  |  |
| 82 | 9.17 | WPR 17 | 15min | 2015-03-05 16:00 | 2015-03-05 16:15 |  |  |  | 91.03d | start no earlier than 2015-03-05 16:00 |  |  |
| 83 | 9.18 | WPR 18 | 15min | 2015-03-12 16:00 | 2015-03-12 16:15 |  |  |  | 84.03d | start no earlier than 2015-03-12 16:00 |  |  |
| 84 | 9.19 | WPR 19 | 15min | 2015-03-19 16:00 | 2015-03-19 16:15 |  |  |  | 77.03d | start no earlier than 2015-03-19 16:00 |  |  |
| 85 | 9.20 | WPR 20 | 15min | 2015-03-26 16:00 | 2015-03-26 16:15 |  |  |  | 70.03d | start no earlier than 2015-03-26 16:00 |  |  |
| 86 | 9.21 | WPR 21 | 15min | 2015-04-02 16:00 | 2015-04-02 16:15 |  |  |  | 63.03d | start no earlier than 2015-04-02 16:00 |  |  |
| 87 | 9.22 | WPR 22 | 15min | 2015-04-09 16:00 | 2015-04-09 16:15 |  |  |  | 56.03d | start no earlier than 2015-04-09 16:00 |  |  |
| 88 | 9.23 | WPR 23 | 15min | 2015-04-16 16:00 | 2015-04-16 16:15 |  |  |  | 49.03d | start no earlier than 2015-04-16 16:00 |  |  |
| 89 | 9.24 | WPR 24 | 15min | 2015-04-23 16:00 | 2015-04-23 16:15 |  |  |  | 42.03d | start no earlier than 2015-04-23 16:00 |  |  |
| 90 | 9.25 | WPR 25 | 15min | 2015-04-30 16:00 | 2015-04-30 16:15 |  |  |  | 35.03d | start no earlier than 2015-04-30 16:00 |  |  |
| 91 | 9.26 | WPR 26 | 15min | 2015-05-07 16:00 | 2015-05-07 16:15 |  |  |  | 28.03d | start no earlier than 2015-05-07 16:00 |  |  |
| 92 | 9.27 | WPR 27 | 15min | 2015-05-14 16:00 | 2015-05-14 16:15 |  |  |  | 21.03d | start no earlier than 2015-05-14 16:00 |  |  |
| 93 | 9.28 | WPR 28 | 15min | 2015-05-21 16:00 | 2015-05-21 16:15 |  |  |  | 14.03d | start no earlier than 2015-05-21 16:00 |  |  |
| 94 | 9.29 | WPR 29 | 15min | 2015-05-28 16:00 | 2015-05-28 16:15 |  |  |  | 7.03d | start no earlier than 2015-05-28 16:00 |  |  |
| 95 | 9.30 | WPR 30 | 15min | 2015-06-04 16:00 | 2015-06-04 16:15 |  |  |  | 0.03d | start no earlier than 2015-06-04 16:00 |  |  |
